# 舍里app1

How a schedule from MS Project changed from version to version. A marks actual dates.

## Version 1 (saved 2019-06-03)

Note of the change: 文档提交

| ID | WBS | Task | Duration | Start | Finish | Predecessors | Total float | Constraint |
| --- | --- | --- | --- | --- | --- | --- | --- | --- |
| 1 | 1 | **启动** | 4d | 2019-03-01 | 2019-03-07 |  |  |  |
| 2 |  | 组建核心团队 | 0.5d | 2019-03-01 | 2019-03-01 |  |  |  |
| 3 |  | 干系人分析 | 0.5d | 2019-03-01 | 2019-03-01 |  |  |  |
| 4 |  | 里程碑计划 | 1d | 2019-03-04 | 2019-03-05 |  |  |  |
| 5 |  | 制定项目章程 | 1d | 2019-03-05 | 2019-03-06 | 2, 3, 4 |  |  |
| 6 |  | 项目启动大会 | 1d | 2019-03-06 | 2019-03-07 | 5 |  |  |
| 7 | 2 | **规划** | 21d | 2019-03-07 | 2019-04-05 |  |  |  |
| 8 | 2.1 | **规划范围** | 6d | 2019-03-07 | 2019-03-15 |  |  |  |
| 9 |  | 制定需求说明书 | 1d | 2019-03-07 | 2019-03-08 | 6 |  |  |
| 10 |  | 界面设计 | 1d | 2019-03-08 | 2019-03-11 | 9 |  |  |
| 11 |  | 详细设计说明书 | 1d | 2019-03-11 | 2019-03-12 | 9 |  |  |
| 12 |  | 范围说明书 | 1d | 2019-03-12 | 2019-03-13 | 9 |  |  |
| 13 |  | 创建WBS | 1d | 2019-03-13 | 2019-03-14 | 10, 11, 12 |  |  |
| 14 |  | 形成范围基准 | 1d | 2019-03-14 | 2019-03-15 | 13 | 0d |  |
| 15 | 2.2 | **规划时间** | 5d | 2019-03-15 | 2019-03-22 |  |  |  |
| 16 |  | 排序工作包顺序 | 1d | 2019-03-15 | 2019-03-18 | 14 |  |  |
| 17 |  | 估算资源 | 1d | 2019-03-18 | 2019-03-19 | 16 |  |  |
| 18 |  | 估算持续时间 | 1d | 2019-03-19 | 2019-03-20 | 17 |  |  |
| 19 |  | 制定进度计划 | 1d | 2019-03-20 | 2019-03-21 | 18 |  |  |
| 20 |  | 形成进度基准 | 1d | 2019-03-21 | 2019-03-22 | 19 |  |  |
| 21 | 2.3 | **规划成本** | 2d | 2019-03-22 | 2019-03-26 |  |  |  |
| 22 |  | 项目成本估算 | 1d | 2019-03-22 | 2019-03-25 |  |  |  |
| 23 |  | 项目成本预算 | 1d | 2019-03-25 | 2019-03-26 |  |  |  |
| 24 | 2.4 | **规划质量** | 1d | 2019-03-26 | 2019-03-27 |  |  |  |
| 25 |  | 制定测试计划 | 0.5d | 2019-03-26 | 2019-03-26 |  |  |  |
| 26 |  | 制定测试用例 | 0.5d | 2019-03-26 | 2019-03-26 |  |  |  |
| 27 | 2.5 | **规划人力资源** | 1d | 2019-03-27 | 2019-03-28 |  |  |  |
| 28 |  | 制定人力资源计划 | 0.5d | 2019-03-27 | 2019-03-27 |  |  |  |
| 29 |  | 制定人员配备管理计划 | 0.5d | 2019-03-27 | 2019-03-27 |  |  |  |
| 30 | 2.6 | **规划沟通** | 1d | 2019-03-28 | 2019-03-29 |  |  |  |
| 31 |  | 制定沟通管理计划 | 1d | 2019-03-28 | 2019-03-29 |  |  |  |
| 32 | 2.7 | **规划采购** | 1d | 2019-03-29 | 2019-04-01 |  |  |  |
| 33 |  | 自制/外购分析 | 0.5d | 2019-03-29 | 2019-03-29 |  |  |  |
| 34 |  | 制定采购文件 | 0.5d | 2019-03-29 | 2019-03-29 |  |  |  |
| 35 | 2.8 | **规划风险** | 3d | 2019-04-01 | 2019-04-04 |  |  |  |
| 36 |  | 识别风险 | 1d | 2019-04-01 | 2019-04-02 |  |  |  |
| 37 |  | 风险分析 | 1d | 2019-04-02 | 2019-04-03 |  |  |  |
| 38 |  | 制定风险登记册 | 1d | 2019-04-03 | 2019-04-04 |  |  |  |
| 39 |  | 规划整合 | 1d | 2019-04-04 | 2019-04-05 |  | 37d | start no earlier than 2019-04-04 |
| 40 | 3 | **执行与监控** | 33d | 2019-04-05 | 2019-05-21 |  |  |  |
| 41 |  | 组建项目团队 | 2d | 2019-04-05 | 2019-04-09 |  |  |  |
| 42 | 3.2 | **项目执行** | 24d | 2019-04-09 | 2019-05-10 |  |  |  |
| 43 | 3.2.1 | **用户模块** | 3d | 2019-04-09 | 2019-04-12 |  |  |  |
| 44 | 3.2.1.1 | **用户注册** | 2d | 2019-04-09 | 2019-04-11 |  |  |  |
| 45 |  | 构建用户信息的数据表 | 0.5d | 2019-04-09 | 2019-04-09 |  |  |  |
| 46 |  | 注册页面的UI设计 | 0.5d | 2019-04-09 | 2019-04-09 |  |  |  |
| 47 |  | 注册页面注册功能实现 | 0.5d | 2019-04-10 | 2019-04-10 |  |  |  |
| 48 |  | 注册功能的测试 | 0.5d | 2019-04-10 | 2019-04-10 |  |  |  |
| 49 | 3.2.1.2 | **用户登录** | 1d | 2019-04-11 | 2019-04-12 |  |  |  |
| 50 |  | 登录页面的UI设计 | 0.5d | 2019-04-03 | 2019-04-03 |  |  |  |
| 51 |  | 登录页面登录功能实现 | 0.3d | 2019-04-03 | 2019-04-03 |  |  |  |
| 52 |  | 登录功能的测试 | 0.2d | 2019-04-03 | 2019-04-03 |  |  |  |
| 53 | 3.2.2 | **求助模块** | 6d | 2019-04-12 | 2019-04-22 |  |  |  |
| 54 |  | 设计求助信息的数据表 | 1d | 2019-04-12 | 2019-04-15 |  |  |  |
| 55 |  | 页面设计 | 2d | 2019-04-15 | 2019-04-17 |  |  |  |
| 56 |  | 发布求助功能 | 3d | 2019-04-17 | 2019-04-22 |  |  |  |
| 57 |  | 再编辑求助 | 3d | 2019-04-17 | 2019-04-22 |  |  |  |
| 58 |  | 解答求助 | 3d | 2019-04-17 | 2019-04-22 |  |  |  |
| 59 |  | 测试发布、解答功能 | 3d | 2019-04-17 | 2019-04-22 |  |  |  |
| 60 | 3.2.3 | **文章模块** | 8d | 2019-04-12 | 2019-04-24 |  |  |  |
| 61 |  | 设计文章信息的数据表 | 2d | 2019-04-12 | 2019-04-16 |  |  |  |
| 62 |  | 页面设计 | 3d | 2019-04-16 | 2019-04-19 |  |  |  |
| 63 |  | 发表文章 | 3d | 2019-04-19 | 2019-04-24 |  |  |  |
| 64 |  | 再编辑文章 | 3d | 2019-04-19 | 2019-04-24 |  |  |  |
| 65 |  | 评论文章 | 3d | 2019-04-19 | 2019-04-24 |  |  |  |
| 66 |  | 点赞文章 | 3d | 2019-04-19 | 2019-04-24 |  |  |  |
| 67 |  | 举报文章 | 3d | 2019-04-19 | 2019-04-24 |  |  |  |
| 68 |  | 收藏文章 | 3d | 2019-04-19 | 2019-04-24 |  |  |  |
| 69 |  | 测试发表、评论、点赞、收藏、举报功能 | 3d | 2019-04-19 | 2019-04-24 |  |  |  |
| 70 | 3.2.4 | **个人中心模块** | 9d | 2019-04-22 | 2019-05-03 |  |  |  |

| ID | WBS | Task | Duration | Start | Finish |
| --- | --- | --- | --- | --- | --- |
| 71 |  | 设计个人详细信息数据表 | 1d | 2019-04-22 | 2019-04-23 |
| 72 |  | 页面设计 | 1d | 2019-04-23 | 2019-04-24 |
| 73 |  | 修改个人信息 | 1d | 2019-04-24 | 2019-04-25 |
| 74 | 3.2.4.4 | **我的发布** | 2d | 2019-04-25 | 2019-04-29 |
| 75 |  | 发布的求助列表 | 0.5d | 2019-04-25 | 2019-04-25 |
| 76 |  | 发布的文章列表 | 0.5d | 2019-04-25 | 2019-04-25 |
| 77 |  | 删除文章、求助 | 0.5d | 2019-04-26 | 2019-04-26 |
| 78 |  | 文章、求助设置权限 | 0.5d | 2019-04-26 | 2019-04-26 |
| 79 |  | 我的收藏 | 0.5d | 2019-04-29 | 2019-04-29 |
| 80 |  | 我的好友 | 0.5d | 2019-04-29 | 2019-04-29 |
| 81 | 3.2.4.7 | **选择服务** | 2d | 2019-04-29 | 2019-05-01 |
| 82 |  | 寄存物品 | 1d | 2019-04-29 | 2019-04-30 |
| 83 |  | 捐赠物品 | 1d | 2019-04-30 | 2019-05-01 |
| 84 |  | 软件设置 | 1d | 2019-05-01 | 2019-05-02 |
| 85 | 3.2.5 | **咨询师模块** | 9d | 2019-04-24 | 2019-05-07 |
| 86 |  | 设计咨询师信息的数据表 | 1d | 2019-04-24 | 2019-04-25 |
| 87 |  | 应聘职位功能 | 2d | 2019-04-25 | 2019-04-29 |
| 88 |  | 咨询师信息列表 | 2d | 2019-04-29 | 2019-05-01 |
| 89 |  | 预约咨询师 | 2d | 2019-05-01 | 2019-05-03 |
| 90 |  | 与咨询师聊天 | 2d | 2019-05-03 | 2019-05-07 |
| 91 | 3.2.6 | **管理员模块** | 3d | 2019-05-07 | 2019-05-10 |
| 92 |  | 审核信息 | 1d | 2019-05-07 | 2019-05-08 |
| 93 |  | 活动发布 | 1d | 2019-05-08 | 2019-05-09 |
| 94 |  | 分析用户登录 | 1d | 2019-05-09 | 2019-05-10 |
| 95 | 3.3 | **项目监控** | 24d | 2019-04-09 | 2019-05-10 |
| 96 |  | 各项指标监控 | 24d | 2019-04-09 | 2019-05-10 |
| 97 |  | 监控评审 | 24d | 2019-04-09 | 2019-05-10 |
| 98 |  | 变更评审 | 24d | 2019-04-09 | 2019-05-10 |
| 99 |  | 例会 | 24d | 2019-04-09 | 2019-05-10 |
| 100 | 3.4 | **管理干系人** | 7d | 2019-04-09 | 2019-04-18 |
| 101 |  | 发布项目信息 | 2d | 2019-04-09 | 2019-04-11 |
| 102 |  | 报告监控指标 | 2d | 2019-04-11 | 2019-04-15 |
| 103 |  | 干系人沟通 | 3d | 2019-04-15 | 2019-04-18 |
| 104 | 3.5 | **团队建设** | 10d | 2019-04-09 | 2019-04-23 |
| 105 |  | 培训 | 1d | 2019-04-09 | 2019-04-10 |
| 106 |  | 娱乐活动 | 6d | 2019-04-10 | 2019-04-18 |
| 107 |  | 沟通 | 3d | 2019-04-18 | 2019-04-23 |
| 108 |  | 采购 | 3d | 2019-04-10 | 2019-04-15 |
| 109 |  | 项目验收 | 2d | 2019-05-17 | 2019-05-21 |
| 110 | 4 | **收尾** | 12d | 2019-05-10 | 2019-05-28 |
| 111 |  | 项目终验 | 3d | 2019-05-10 | 2019-05-15 |
| 112 |  | 结束采购 | 5d | 2019-05-15 | 2019-05-22 |
| 113 |  | 项目内部收尾 | 4d | 2019-05-22 | 2019-05-28 |

## Version 2 (saved 2019-06-04)

Note of the change: 作业重新提交

Last finish 2019-05-28 → 2019-05-21 (-7d).

Changed:

| ID | Task | Start | Finish | Duration | Total float | Predecessors | Other |
| --- | --- | --- | --- | --- | --- | --- | --- |
| 1 | **启动** | 2019-03-01 → 2019-03-01 09:00 | 2019-03-07 → 2019-03-05 14:00 (-2d) | 4d → 2.5d |  |  | resources 间接成本 [0.1%]; 项目经理 → 间接成本 [0.1%] |
| 2 | 组建核心团队 | 2019-03-01 → 2019-03-01 09:00 | 2019-03-01 → 2019-03-01 14:00 |  |  |  |  |
| 3 | 干系人分析 | 2019-03-01 → 2019-03-01 09:00 | 2019-03-01 → 2019-03-01 14:00 |  |  |  |  |
| 4 | 里程碑计划 | 2019-03-04 → 2019-03-04 09:00 | 2019-03-05 → 2019-03-04 14:00 (-1d) | 1d → 0.5d |  |  |  |
| 5 | 制定项目章程 | 2019-03-05 → 2019-03-04 09:00 (-1d) | 2019-03-06 → 2019-03-04 14:00 (-2d) | 1d → 0.5d |  |  |  |
| 6 | 项目启动大会 | 2019-03-06 → 2019-03-05 09:00 (-1d) | 2019-03-07 → 2019-03-05 14:00 (-2d) | 1d → 0.5d |  |  |  |
| 7 | **规划** | 2019-03-07 → 2019-03-06 09:00 (-1d) | 2019-04-05 → 2019-04-04 09:00 (-1d) |  |  |  | resources 间接成本 [0.1%]; 项目经理 → 间接成本 [0.1%] |
| 8 | **规划范围** | 2019-03-07 → 2019-03-06 09:00 (-1d) | 2019-03-15 → 2019-03-12 09:00 (-3d) | 6d → 4d |  |  |  |
| 9 | 制定需求说明书 | 2019-03-07 → 2019-03-06 09:00 (-1d) | 2019-03-08 → 2019-03-07 09:00 (-1d) |  |  |  |  |
| 10 | 界面设计 | 2019-03-08 → 2019-03-07 09:00 (-1d) | 2019-03-11 → 2019-03-08 09:00 (-3d) |  |  |  |  |
| 11 | 详细设计说明书 | 2019-03-11 → 2019-03-07 09:00 (-4d) | 2019-03-12 → 2019-03-08 09:00 (-4d) |  |  |  |  |
| 12 | 范围说明书 | 2019-03-12 → 2019-03-07 09:00 (-5d) | 2019-03-13 → 2019-03-08 09:00 (-5d) |  |  |  |  |
| 13 | 创建WBS | 2019-03-13 → 2019-03-08 09:00 (-5d) | 2019-03-14 → 2019-03-11 09:00 (-3d) |  |  |  |  |
| 14 | 形成范围基准 | 2019-03-14 → 2019-03-11 09:00 (-3d) | 2019-03-15 → 2019-03-12 09:00 (-3d) |  |  |  |  |
| 15 | **规划时间** | 2019-03-15 → 2019-03-12 09:00 (-3d) | 2019-03-22 → 2019-03-19 09:00 (-3d) |  |  |  |  |
| 16 | 排序工作包顺序 | 2019-03-15 → 2019-03-12 09:00 (-3d) | 2019-03-18 → 2019-03-13 09:00 (-5d) |  |  |  |  |
| 17 | 估算资源 | 2019-03-18 → 2019-03-13 09:00 (-5d) | 2019-03-19 → 2019-03-14 09:00 (-5d) |  |  |  |  |
| 18 | 估算持续时间 | 2019-03-19 → 2019-03-14 09:00 (-5d) | 2019-03-20 → 2019-03-15 09:00 (-5d) |  |  |  |  |
| 19 | 制定进度计划 | 2019-03-20 → 2019-03-15 09:00 (-5d) | 2019-03-21 → 2019-03-18 09:00 (-3d) |  |  |  |  |
| 20 | 形成进度基准 | 2019-03-21 → 2019-03-18 09:00 (-3d) | 2019-03-22 → 2019-03-19 09:00 (-3d) |  |  |  |  |
| 21 | **规划成本** | 2019-03-22 → 2019-03-19 09:00 (-3d) | 2019-03-26 → 2019-03-21 09:00 (-5d) |  |  |  | resources 项目经理 → none |
| 22 | 项目成本估算 | 2019-03-22 → 2019-03-19 09:00 (-3d) | 2019-03-25 → 2019-03-20 09:00 (-5d) |  |  | none → 20 |  |
| 23 | 项目成本预算 | 2019-03-25 → 2019-03-20 09:00 (-5d) | 2019-03-26 → 2019-03-21 09:00 (-5d) |  |  | none → 22 |  |
| 24 | **规划质量** | 2019-03-26 → 2019-03-21 09:00 (-5d) | 2019-03-27 → 2019-03-25 09:00 (-2d) | 1d → 2d |  |  | resources 质量专家 → none |
| 25 | 制定测试计划 | 2019-03-26 → 2019-03-21 09:00 (-5d) | 2019-03-26 → 2019-03-22 09:00 (-4d) | 0.5d → 1d |  | none → 14 |  |
| 26 | 制定测试用例 | 2019-03-26 → 2019-03-22 09:00 (-4d) | 2019-03-26 → 2019-03-25 09:00 (-1d) | 0.5d → 1d |  | none → 25 |  |
| 27 | **规划人力资源** | 2019-03-27 → 2019-03-25 09:00 (-2d) | 2019-03-28 → 2019-03-27 09:00 (-1d) | 1d → 2d |  |  | resources 项目经理 → none |
| 28 | 制定人力资源计划 | 2019-03-27 → 2019-03-25 09:00 (-2d) | 2019-03-27 → 2019-03-26 09:00 (-1d) | 0.5d → 1d |  | none → 17 |  |
| 29 | 制定人员配备管理计划 | 2019-03-27 → 2019-03-26 09:00 (-1d) | 2019-03-27 → 2019-03-27 09:00 | 0.5d → 1d |  | none → 28 |  |
| 30 | **规划沟通** | 2019-03-28 → 2019-03-27 09:00 (-1d) | 2019-03-29 → 2019-03-28 09:00 (-1d) |  |  |  | resources 项目经理 → none |
| 31 | 制定沟通管理计划 | 2019-03-28 → 2019-03-27 09:00 (-1d) | 2019-03-29 → 2019-03-28 09:00 (-1d) |  |  | none → 29 |  |
| 32 | **规划采购** | 2019-03-29 → 2019-03-29 09:00 | 2019-04-01 → 2019-04-01 09:00 |  |  |  | resources 项目经理 → none |
| 33 | 自制/外购分析 | 2019-03-29 → 2019-03-29 09:00 | 2019-03-29 → 2019-03-29 14:00 |  |  | none → 17 |  |
| 34 | 制定采购文件 | 2019-03-29 → 2019-04-01 09:00 (+3d) | 2019-03-29 → 2019-04-01 18:00 (+3d) | 0.5d → 1d |  | none → 33 |  |
| 35 | **规划风险** | 2019-04-01 → 2019-04-01 09:00 | 2019-04-04 → 2019-04-04 09:00 |  |  |  | resources 项目经理 → none |
| 36 | 识别风险 | 2019-04-01 → 2019-04-01 09:00 | 2019-04-02 → 2019-04-02 09:00 |  |  | none → 15, 21, 24, 27 |  |
| 37 | 风险分析 | 2019-04-02 → 2019-04-02 09:00 | 2019-04-03 → 2019-04-03 09:00 |  |  | none → 36 |  |
| 38 | 制定风险登记册 | 2019-04-03 → 2019-04-03 09:00 | 2019-04-04 → 2019-04-04 09:00 |  |  | none → 37 |  |
| 39 | 规划整合 | 2019-04-04 → 2019-04-04 09:00 | 2019-04-05 → 2019-04-05 09:00 |  | 37d → 32.88d | none → 38 | constraint start no earlier than 2019-04-04 → start no earlier than 2019-04-04 09:00 |
| 40 | **执行与监控** | 2019-04-05 → 2019-04-05 09:00 | 2019-05-21 → 2019-05-21 18:00 |  |  |  |  |
| 41 | 组建项目团队 | 2019-04-05 → 2019-04-05 09:00 | 2019-04-09 → 2019-04-09 09:00 |  |  |  |  |
| 42 | **项目执行** | 2019-04-09 → 2019-04-09 09:00 | 2019-05-10 → 2019-05-13 18:00 (+3d) | 24d → 25d |  |  |  |
| 43 | **用户模块** | 2019-04-09 → 2019-04-09 09:00 | 2019-04-12 → 2019-04-10 18:00 (-2d) | 3d → 2d |  |  |  |
| 44 | **用户注册** | 2019-04-09 → 2019-04-09 09:00 | 2019-04-11 → 2019-04-10 18:00 (-1d) |  |  |  | resources 测试员1; 后端程序员1; 前端程序员1 → none |
| 45 | 构建用户信息的数据表 | 2019-04-09 → 2019-04-09 09:00 | 2019-04-09 → 2019-04-09 14:00 |  |  | none → 41 |  |
| 46 | 注册页面的UI设计 | 2019-04-09 → 2019-04-09 09:00 | 2019-04-09 → 2019-04-09 14:00 |  |  | none → 41 |  |
| 47 | 注册页面注册功能实现 | 2019-04-10 → 2019-04-09 14:00 (-1d) | 2019-04-10 → 2019-04-10 09:00 |  |  | none → 46 |  |
| 48 | 注册功能的测试 | 2019-04-10 → 2019-04-10 09:00 | 2019-04-10 → 2019-04-10 14:00 |  |  | none → 47 |  |
| 49 | **用户登录** | 2019-04-11 → 2019-04-09 09:00 (-2d) | 2019-04-12 → 2019-04-10 09:00 (-2d) |  |  |  | resources 测试员1; 后端程序员1; 前端程序员1 → none |
| 50 | 登录页面的UI设计 | 2019-04-03 → 2019-04-09 09:00 (+6d) | 2019-04-03 → 2019-04-09 14:00 (+6d) |  |  | none → 41 | resources UI专家; 前端程序员2 → 前端程序员2 |
| 51 | 登录页面登录功能实现 | 2019-04-03 → 2019-04-09 14:00 (+6d) | 2019-04-03 → 2019-04-09 16:24 (+6d) |  |  | none → 50 |  |
| 52 | 登录功能的测试 | 2019-04-03 → 2019-04-09 16:24 (+6d) | 2019-04-03 → 2019-04-10 09:00 (+7d) |  |  | none → 51 |  |
| 53 | **求助模块** | 2019-04-12 → 2019-04-10 09:00 (-2d) | 2019-04-22 → 2019-04-17 18:00 (-5d) |  |  |  |  |
| 54 | 设计求助信息的数据表 | 2019-04-12 → 2019-04-10 09:00 (-2d) | 2019-04-15 → 2019-04-10 14:00 (-5d) | 1d → 0.5d |  | none → 41 | resources 后端程序员2 → 后端程序员1 |
| 55 | 页面设计 | 2019-04-15 → 2019-04-10 09:00 (-5d) | 2019-04-17 → 2019-04-11 09:00 (-6d) | 2d → 1d |  | none → 41 | resources 前端程序员2 → 前端程序员1 |
| 56 | 发布求助功能 | 2019-04-17 → 2019-04-11 09:00 (-6d) | 2019-04-22 → 2019-04-12 09:00 (-10d) | 3d → 1d |  | none → 55 | resources 后端程序员2 → 后端程序员1 |
| 57 | 再编辑求助 | 2019-04-17 → 2019-04-12 09:00 (-5d) | 2019-04-22 → 2019-04-15 14:00 (-7d) | 3d → 1.5d |  | none → 56 | resources 后端程序员2 → 后端程序员1 |
| 58 | 解答求助 | 2019-04-17 → 2019-04-15 09:00 (-2d) | 2019-04-22 → 2019-04-15 14:00 (-7d) | 3d → 0.5d |  | none → 55 | resources 后端程序员2 → 后端程序员1 |
| 59 | 测试发布、解答功能 | 2019-04-17 → 2019-04-16 09:00 (-1d) | 2019-04-22 → 2019-04-17 14:00 (-5d) | 3d → 1.5d |  | none → 58 | resources 测试员2 → 测试员1 |
| 60 | **文章模块** | 2019-04-12 → 2019-04-11 09:00 (-1d) | 2019-04-24 → 2019-04-23 09:00 (-1d) |  |  |  |  |
| 61 | 设计文章信息的数据表 | 2019-04-12 → 2019-04-11 09:00 (-1d) | 2019-04-16 → 2019-04-11 14:00 (-5d) | 2d → 0.5d |  | none → 41 | resources 后端程序员1 → 后端程序员2 |
| 62 | 页面设计 | 2019-04-16 → 2019-04-12 09:00 (-4d) | 2019-04-19 → 2019-04-15 09:00 (-4d) | 3d → 1d |  | none → 61 | resources 前端程序员1 → 前端程序员2 |
| 63 | 发表文章 | 2019-04-19 → 2019-04-15 09:00 (-4d) | 2019-04-24 → 2019-04-17 09:00 (-7d) | 3d → 2d |  | none → 62 | resources 后端程序员1 → 后端程序员2 |
| 64 | 再编辑文章 | 2019-04-19 → 2019-04-17 09:00 (-2d) | 2019-04-24 → 2019-04-17 14:00 (-7d) | 3d → 0.5d |  | none → 63 | resources 后端程序员1 → 后端程序员2 |
| 65 | 评论文章 | 2019-04-19 → 2019-04-17 09:00 (-2d) | 2019-04-24 → 2019-04-17 14:00 (-7d) | 3d → 0.5d |  | none → 63 | resources 后端程序员1 → 后端程序员2 |
| 66 | 点赞文章 | 2019-04-19 → 2019-04-18 09:00 (-1d) | 2019-04-24 → 2019-04-18 14:00 (-6d) | 3d → 0.5d |  | none → 63 | resources 后端程序员1 → 后端程序员2 |
| 67 | 举报文章 | 2019-04-19 → 2019-04-18 09:00 (-1d) | 2019-04-24 → 2019-04-18 14:00 (-6d) | 3d → 0.5d |  | none → 63 | resources 后端程序员1 → 后端程序员2 |
| 68 | 收藏文章 | 2019-04-19 → 2019-04-19 09:00 | 2019-04-24 → 2019-04-19 14:00 (-5d) | 3d → 0.5d |  | none → 63 | resources 后端程序员1 → 后端程序员2 |
| 69 | 测试发表、评论、点赞、收藏、举报功能 | 2019-04-19 → 2019-04-19 09:00 | 2019-04-24 → 2019-04-23 09:00 (-1d) | 3d → 2d |  | none → 63 | resources 测试员1 → 测试员2 |
| 70 | **个人中心模块** | 2019-04-22 → 2019-04-23 09:00 (+1d) | 2019-05-03 → 2019-05-06 09:00 (+3d) |  |  |  |  |

| ID | Task | Start | Finish | Duration | Predecessors | Other |
| --- | --- | --- | --- | --- | --- | --- |
| 71 | 设计个人详细信息数据表 | 2019-04-22 → 2019-04-23 09:00 (+1d) | 2019-04-23 → 2019-04-23 14:00 | 1d → 0.5d | none → 41 | resources 后端程序员2 → 后端程序员1 |
| 72 | 页面设计 | 2019-04-23 → 2019-04-24 09:00 (+1d) | 2019-04-24 → 2019-04-25 09:00 (+1d) |  | none → 41 | resources 前端程序员2 → 前端程序员1 |
| 73 | 修改个人信息 | 2019-04-24 → 2019-04-25 09:00 (+1d) | 2019-04-25 → 2019-04-26 09:00 (+1d) |  | none → 72 | resources 后端程序员2 → 后端程序员1 |
| 74 | **我的发布** | 2019-04-25 → 2019-04-26 09:00 (+1d) | 2019-04-29 → 2019-04-30 09:00 (+1d) |  |  | resources 后端程序员2 → none |
| 75 | 发布的求助列表 | 2019-04-25 → 2019-04-26 09:00 (+1d) | 2019-04-25 → 2019-04-26 14:00 (+1d) |  | none → 41 | resources none → 后端程序员1 |
| 76 | 发布的文章列表 | 2019-04-25 → 2019-04-26 09:00 (+1d) | 2019-04-25 → 2019-04-26 14:00 (+1d) |  | none → 41 | resources none → 后端程序员1 |
| 77 | 删除文章、求助 | 2019-04-26 → 2019-04-29 09:00 (+3d) | 2019-04-26 → 2019-04-29 14:00 (+3d) |  | none → 75, 76 | resources none → 后端程序员1 |
| 78 | 文章、求助设置权限 | 2019-04-26 → 2019-04-29 09:00 (+3d) | 2019-04-26 → 2019-04-29 14:00 (+3d) |  | none → 76 | resources none → 后端程序员1 |
| 79 | 我的收藏 | 2019-04-29 → 2019-04-30 09:00 (+1d) | 2019-04-29 → 2019-04-30 14:00 (+1d) |  | none → 72 | resources 后端程序员2 → 后端程序员1 |
| 80 | 我的好友 | 2019-04-29 → 2019-04-30 09:00 (+1d) | 2019-04-29 → 2019-04-30 14:00 (+1d) |  | none → 71 | resources 后端程序员2 → 后端程序员1 |
| 81 | **选择服务** | 2019-04-29 → 2019-05-01 09:00 (+2d) | 2019-05-01 → 2019-05-03 09:00 (+2d) |  |  | resources 后端程序员2 → none |
| 82 | 寄存物品 | 2019-04-29 → 2019-05-01 09:00 (+2d) | 2019-04-30 → 2019-05-02 09:00 (+2d) |  | none → 72 | resources none → 后端程序员1 |
| 83 | 捐赠物品 | 2019-04-30 → 2019-05-02 09:00 (+2d) | 2019-05-01 → 2019-05-03 09:00 (+2d) |  | none → 72 | resources none → 后端程序员1 |
| 84 | 软件设置 | 2019-05-01 → 2019-05-03 09:00 (+2d) | 2019-05-02 → 2019-05-06 09:00 (+4d) |  | none → 41 | resources 后端程序员2 → 后端程序员1 |
| 85 | **咨询师模块** | 2019-04-24 → 2019-05-06 09:00 (+12d) | 2019-05-07 → 2019-05-10 09:00 (+3d) | 9d → 4d |  |  |
| 86 | 设计咨询师信息的数据表 | 2019-04-24 → 2019-05-06 09:00 (+12d) | 2019-04-25 → 2019-05-06 14:00 (+11d) | 1d → 0.5d | none → 41 | resources 后端程序员1 → 后端程序员2 |
| 87 | 应聘职位功能 | 2019-04-25 → 2019-05-06 09:00 (+11d) | 2019-04-29 → 2019-05-07 09:00 (+8d) | 2d → 1d | none → 86 | resources 后端程序员1 → 后端程序员2 |
| 88 | 咨询师信息列表 | 2019-04-29 → 2019-05-07 09:00 (+8d) | 2019-05-01 → 2019-05-07 14:00 (+6d) | 2d → 0.5d | none → 86 | resources 后端程序员1 → 后端程序员2 |
| 89 | 预约咨询师 | 2019-05-01 → 2019-05-08 09:00 (+7d) | 2019-05-03 → 2019-05-09 09:00 (+6d) | 2d → 1d | none → 88 | resources 后端程序员1 → 后端程序员2 |
| 90 | 与咨询师聊天 | 2019-05-03 → 2019-05-09 09:00 (+6d) | 2019-05-07 → 2019-05-10 09:00 (+3d) | 2d → 1d | none → 86 | resources 后端程序员1 → 后端程序员2 |
| 91 | **管理员模块** | 2019-05-07 → 2019-05-10 09:00 (+3d) | 2019-05-10 → 2019-05-13 18:00 (+3d) | 3d → 2d |  |  |
| 92 | 审核信息 | 2019-05-07 → 2019-05-10 09:00 (+3d) | 2019-05-08 → 2019-05-13 09:00 (+5d) |  | none → 41 |  |
| 93 | 活动发布 | 2019-05-08 → 2019-05-13 09:00 (+5d) | 2019-05-09 → 2019-05-13 14:00 (+4d) | 1d → 0.5d | none → 92 |  |
| 94 | 分析用户登录 | 2019-05-09 → 2019-05-13 09:00 (+4d) | 2019-05-10 → 2019-05-13 14:00 (+3d) | 1d → 0.5d | none → 92 |  |
| 95 | **项目监控** | 2019-04-09 → 2019-04-09 09:00 | 2019-05-10 → 2019-05-21 18:00 (+11d) | 24d → 31d |  | resources UI专家; 技术专家; 项目经理; 质量专家 → none |
| 96 | 各项指标监控 | 2019-04-09 → 2019-04-09 09:00 | 2019-05-10 → 2019-05-13 18:00 (+3d) | 24d → 25d | none → 41 | resources none → 测试员1; 测试员2; 项目经理 |
| 97 | 监控评审 | 2019-04-09 → 2019-05-14 09:00 (+35d) | 2019-05-10 → 2019-05-17 09:00 (+7d) | 24d → 3d | none → 96 | resources none → 技术专家; 项目经理 |
| 98 | 变更评审 | 2019-04-09 → 2019-05-17 09:00 (+38d) | 2019-05-10 → 2019-05-21 09:00 (+11d) | 24d → 2d | none → 97 | resources none → 技术专家; 项目经理 |
| 99 | 例会 | 2019-04-09 → 2019-04-09 09:00 | 2019-05-10 → 2019-04-16 09:00 (-24d) | 24d → 5d | none → 41 | resources none → UI专家; 测试员1; 测试员2; 后端程序员1; 后端程序员2; 技术专家; 前端程序员1; 前端程序员2; 项目经理; 需求专家; 质量专家 |
| 100 | **管理干系人** | 2019-04-09 → 2019-04-09 09:00 | 2019-04-18 → 2019-04-12 09:00 (-6d) | 7d → 3d |  | resources 项目经理 → none |
| 101 | 发布项目信息 | 2019-04-09 → 2019-04-09 09:00 | 2019-04-11 → 2019-04-10 09:00 (-1d) | 2d → 1d | none → 41 | resources none → 项目经理 |
| 102 | 报告监控指标 | 2019-04-11 → 2019-04-10 09:00 (-1d) | 2019-04-15 → 2019-04-11 09:00 (-4d) | 2d → 1d | none → 41 | resources none → 项目经理 |
| 103 | 干系人沟通 | 2019-04-15 → 2019-04-11 09:00 (-4d) | 2019-04-18 → 2019-04-12 09:00 (-6d) | 3d → 1d | none → 41 | resources none → 项目经理 |
| 104 | **团队建设** | 2019-04-09 → 2019-04-09 09:00 | 2019-04-23 → 2019-04-16 09:00 (-7d) | 10d → 5d |  |  |
| 105 | 培训 | 2019-04-09 → 2019-04-09 09:00 | 2019-04-10 → 2019-04-10 09:00 |  | none → 41 |  |
| 106 | 娱乐活动 | 2019-04-10 → 2019-04-10 09:00 | 2019-04-18 → 2019-04-12 09:00 (-6d) | 6d → 2d | none → 41 |  |
| 107 | 沟通 | 2019-04-18 → 2019-04-09 09:00 (-9d) | 2019-04-23 → 2019-04-11 09:00 (-12d) | 3d → 2d | none → 41 |  |
| 108 | 采购 | 2019-04-10 → 2019-04-09 09:00 (-1d) | 2019-04-15 → 2019-04-12 09:00 (-3d) |  | none → 41 | resources none → 项目经理 |
| 109 | 项目验收 | 2019-05-17 → 2019-05-14 08:00 (-3d) | 2019-05-21 → 2019-05-15 17:00 (-6d) |  | none → 42 | resources none → UI专家; 技术专家; 项目经理; 需求专家; 质量专家 |
| 110 | **收尾** | 2019-05-10 → 2019-05-16 09:00 (+6d) | 2019-05-28 → 2019-05-21 09:00 (-7d) | 12d → 3d |  |  |
| 111 | 项目终验 | 2019-05-10 → 2019-05-16 08:00 (+6d) | 2019-05-15 → 2019-05-16 17:00 (+1d) | 3d → 1d | none → 109 | resources 测试员1; 测试员2; 技术专家; 需求专家; 质量专家; 项目经理 → UI专家; 技术专家; 需求专家; 质量专家; 项目经理 |
| 112 | 结束采购 | 2019-05-15 → 2019-04-11 09:00 (-34d) | 2019-05-22 → 2019-04-12 09:00 (-40d) | 5d → 1d | none → 107 |  |
| 113 | 项目内部收尾 | 2019-05-22 → 2019-04-12 09:00 (-40d) | 2019-05-28 → 2019-04-15 09:00 (-43d) | 4d → 1d | none → 112 | resources UI专家; 测试员1; 测试员2; 后端程序员1; 后端程序员2; 技术专家; 前端程序员1; 前端程序员2; 项目经理; 需求专家; 质量专家 → UI专家; 技术专家; 项目经理; 需求专家; 质量专家 |
